# Ekos2_Project

Schedule from MS Project, 2009-11-11 to 2009-12-25, 6 hours a day.
N/A

## Calendars

- Padrão: Mon-Fri 10:00-12:00, 13:00-17:00; Sat-Sun off.

## Resources

| Resource |
| --- |
| Igor |
| Daniel |
| Kelson |
| Rafael |
| Sérgio |
| Felipe |
| Marcus |
| Paulo |

## Schedule

| ID | WBS | Task | Type | Duration | Start | Finish | Predecessors | Baseline start | Baseline finish | Baseline duration | Total slack | Free slack | Constraint | Resources | Work |
| --- | --- | --- | --- | --- | --- | --- | --- | --- | --- | --- | --- | --- | --- | --- | --- |
| 1 | 1 | **M1** |  | 31d | 2009-11-11 | 2009-12-23 |  | 2009-11-11 | 2009-12-16 | 26d | 0d |  |  |  | 300h |
| 2 | 1.1 | **Design** |  | 3d | 2009-11-11 | 2009-11-13 |  | 2009-11-11 | 2009-11-13 | 3d | 4d |  |  |  | 36h |
| 3 | 1.1.1 | **Cockpit** |  | 3d | 2009-11-11 | 2009-11-13 |  | 2009-11-11 | 2009-11-13 | 3d | 4d |  |  |  | 36h |
| 4 | 1.1.1.1 | **IDM** |  | 3d | 2009-11-11 | 2009-11-13 |  | 2009-11-11 | 2009-11-13 | 3d | 28d |  |  |  | 18h |
| 5 | 1.1.1.1.1 | SSO |  | 1d | 2009-11-11 | 2009-11-11 |  | 2009-11-11 | 2009-11-11 | 1d | 28d | 0d | start no earlier than 2009-11-11 | Felipe | 6h |
| 6 | 1.1.1.1.2 | Self-Service |  | 2d | 2009-11-12 | 2009-11-13 | 5 | 2009-11-12 | 2009-11-13 | 2d | 23d |  |  | Felipe | 12h |
| 7 | 1.1.1.2 | **General** |  | 3d | 2009-11-11 | 2009-11-13 |  | 2009-11-11 | 2009-11-13 | 3d | 4d |  |  |  | 18h |
| 8 | 1.1.1.2.1 | StartUp |  | 3d | 2009-11-11 | 2009-11-13 |  | 2009-11-11 | 2009-11-13 | 3d | 4d | 0d | start no earlier than 2009-11-11 | Daniel | 18h |
| 9 | 1.2 | **Application** |  | 28d | 2009-11-16 | 2009-12-23 |  | 2009-11-16 | 2009-12-16 | 23d | 0d |  |  |  | 264h |
| 10 | 1.2.1 | **Relationship** |  | 15d | 2009-11-16 | 2009-12-04 |  | 2009-11-16 | 2009-11-27 | 10d | 4d |  |  |  | 126h |
| 11 | 1.2.1.1 | **Avatar** |  | 9d | 2009-11-16 | 2009-11-26 |  | 2009-11-16 | 2009-11-20 | 5d | 0d |  |  |  | 30h |
| 12 | 1.2.1.1.1 | StartUp |  | 1d | 2009-11-16 | 2009-11-16 | 8 | 2009-11-16 | 2009-11-16 | 1d | 4d | 0d | start no earlier than 2009-11-16 | Daniel | 6h |
| 13 | 1.2.1.1.2 | Add Friend |  | 1d | 2009-11-17 | 2009-11-17 | 12 | 2009-11-17 | 2009-11-17 | 1d | 4d | 0d |  | Daniel | 6h |
| 14 | 1.2.1.1.3 | Ignore |  | 1d | 2009-11-18 | 2009-11-18 | 13 | 2009-11-18 | 2009-11-18 | 1d | 4d |  |  | Daniel | 6h |
| 15 | 1.2.1.1.4 | View Profile |  | 1d | 2009-11-25 | 2009-11-25 | 14 | 2009-11-19 | 2009-11-19 | 1d | 0d |  | start no earlier than 2009-11-25 | Daniel | 6h |
| 16 | 1.2.1.1.5 | Send Message |  | 1d | 2009-11-26 | 2009-11-26 | 15 | 2009-11-20 | 2009-11-20 | 1d | 0d |  |  | Daniel | 6h |
| 17 | 1.2.1.2 | Profile |  | 1w | 2009-11-16 | 2009-11-20 |  | 2009-11-16 | 2009-11-20 | 1w | 18d | 0d |  | Felipe | 30h |
| 18 | 1.2.1.3 | Friend |  | 1w | 2009-11-23 | 2009-11-27 | 12, 17 | 2009-11-23 | 2009-11-27 | 1w | 13d |  |  | Felipe | 30h |
| 19 | 1.2.1.4 | Message |  | 3d | 2009-11-27 | 2009-12-01 | 16 | 2009-11-23 | 2009-11-25 | 0.5w | 0d |  |  | Daniel | 18h |
| 20 | 1.2.1.5 | Scrap |  | 3d | 2009-12-02 | 2009-12-04 | 19 | 2009-11-25 | 2009-11-27 | 0.5w | 0d |  |  | Daniel | 18h |
| 21 | 1.2.2 | **Content** |  | 13d | 2009-12-04 | 2009-12-23 | 20 | 2009-11-30 | 2009-12-16 | 13d | 0d |  |  |  | 138h |
| 22 | 1.2.2.1 | **Container** |  | 3d | 2009-12-07 | 2009-12-09 |  | 2009-11-30 | 2009-12-02 | 3d | 5d | 0d |  |  | 18h |
| 23 | 1.2.2.1.1 | Painel |  | 3d | 2009-12-07 | 2009-12-09 |  | 2009-11-30 | 2009-12-02 | 3d | 5d | 0d |  | Daniel | 18h |
| 24 | 1.2.2.2 | **Increment** |  | 8d | 2009-12-04 | 2009-12-16 |  | 2009-11-30 | 2009-12-09 | 8d | 0d |  |  |  | 66h |
| 25 | 1.2.2.2.1 | Recommendation | milestone | 0w | 2009-12-04 | 2009-12-04 | 20 | 2009-11-30 | 2009-11-30 | 0w | 0d |  | start no earlier than 2009-11-30 | Felipe |  |
| 26 | 1.2.2.2.2 | Poll |  | 3d | 2009-12-07 | 2009-12-09 | 25 | 2009-11-30 | 2009-12-02 | 3d | 0d |  |  | Felipe | 18h |
| 27 | 1.2.2.2.3 | Survey |  | 1w | 2009-12-10 | 2009-12-16 | 26 | 2009-12-03 | 2009-12-09 | 1w | 0d |  |  | Felipe | 30h |
| 28 | 1.2.2.2.4 | Comment |  | 3d | 2009-12-14 | 2009-12-16 | 30 | 2009-12-07 | 2009-12-09 | 3d | 5d |  |  | Daniel | 18h |

| ID | WBS | Task | Type | Duration | Start | Finish | Predecessors | Baseline start | Baseline finish | Baseline duration | Total slack | Free slack | Resources | Work |
| --- | --- | --- | --- | --- | --- | --- | --- | --- | --- | --- | --- | --- | --- | --- |
| 29 | 1.2.2.3 | **Type** |  | 2d | 2009-12-10 | 2009-12-11 |  | 2009-12-03 | 2009-12-04 | 2d | 5d |  |  | 24h |
| 30 | 1.2.2.3.1 | Blog |  | 2d | 2009-12-10 | 2009-12-11 | 23 | 2009-12-03 | 2009-12-04 | 2d | 5d | 0d | Daniel | 12h |
| 31 | 1.2.2.3.2 | Bookmark |  | 2d | 2009-12-10 | 2009-12-11 | 22 | 2009-12-03 | 2009-12-04 | 2d | 8d |  | Sérgio | 12h |
| 32 | 1.2.2.4 | Search |  | 1w | 2009-12-17 | 2009-12-23 | 27 | 2009-12-10 | 2009-12-16 | 1w | 0d |  | Felipe | 30h |
| 33 | 2 | M2 | milestone | 0w? | 2009-12-23 | 2009-12-23 | 1 | 2009-12-16 | 2009-12-16 | 0w? | 0d |  |  |  |
| 34 | 3 | **Não planejado** |  | 1.33d? | 2009-12-23 | 2009-12-25 | 33 | 2009-12-16 | 2009-12-18 | 1.33d? | 0d |  |  |  |
| 35 | 3.1 | **Application** |  | 1.33d? | 2009-12-24 | 2009-12-25 |  | 2009-12-17 | 2009-12-18 | 1.33d? | 0d |  |  |  |
| 36 | 3.1.1 | Calendar |  | 1.33d? | 2009-12-24 | 2009-12-25 |  | 2009-12-17 | 2009-12-18 | 1.33d? | 0d |  |  |  |
| 37 | 3.1.2 | File manager |  | 1.33d? | 2009-12-24 | 2009-12-25 |  | 2009-12-17 | 2009-12-18 | 1.33d? | 0d |  |  |  |
| 38 | 3.1.3 | Microblog |  | 1.33d? | 2009-12-24 | 2009-12-25 |  | 2009-12-17 | 2009-12-18 | 1.33d? | 0d |  |  |  |
| 39 | 3.1.4 | Note |  | 1.33d? | 2009-12-24 | 2009-12-25 |  | 2009-12-17 | 2009-12-18 | 1.33d? | 0d |  |  |  |
| 40 | 3.1.5 | **Furure** |  | 1.33d? | 2009-12-24 | 2009-12-25 |  | 2009-12-17 | 2009-12-18 | 1.33d? | 0d |  |  |  |
| 41 | 3.1.5.1 | Issue Tracker |  | 1.33d? | 2009-12-24 | 2009-12-25 |  | 2009-12-17 | 2009-12-18 | 1.33d? | 0d |  |  |  |
| 42 | 3.1.5.2 | News reader |  | 1.33d? | 2009-12-24 | 2009-12-25 |  | 2009-12-17 | 2009-12-18 | 1.33d? | 0d |  |  |  |
| 43 | 3.1.5.3 | Project Manager |  | 1.33d? | 2009-12-24 | 2009-12-25 |  | 2009-12-17 | 2009-12-18 | 1.33d? | 0d |  |  |  |
| 44 | 3.2 | **Content** |  | 1.33d? | 2009-12-23 | 2009-12-25 |  | 2009-12-16 | 2009-12-18 | 1.33d? | 0d |  |  |  |
| 45 | 3.2.1 | History |  | 1.33d? | 2009-12-24 | 2009-12-25 |  | 2009-12-17 | 2009-12-18 | 1.33d? | 0d |  |  |  |
| 46 | 3.2.2 | **Type** |  | 0d? | 2009-12-23 | 2009-12-23 |  | 2009-12-16 | 2009-12-16 | 0d? | 1.33d |  |  |  |
| 47 | 3.2.2.1 | Wiki | milestone | 0w? | 2009-12-23 | 2009-12-23 |  | 2009-12-16 | 2009-12-16 | 0w? | 1.33d |  |  |  |
| 48 | 3.2.2.2 | Course | milestone | 0w | 2009-12-23 | 2009-12-23 |  | 2009-12-16 | 2009-12-16 | 0w | 1.33d |  |  |  |
| 49 | 3.2.3 | **Increment** |  | 1.33d? | 2009-12-24 | 2009-12-25 |  | 2009-12-17 | 2009-12-18 | 1.33d? | 0d |  |  |  |
| 50 | 3.2.3.1 | Calendar Link |  | 1.33d? | 2009-12-24 | 2009-12-25 |  | 2009-12-17 | 2009-12-18 | 1.33d? | 0d |  |  |  |
| 51 | 3.2.3.2 | Event |  | 1.33d? | 2009-12-24 | 2009-12-25 |  | 2009-12-17 | 2009-12-18 | 1.33d? | 0d |  |  |  |
| 52 | 3.2.3.3 | User Voting |  | 1.33d? | 2009-12-24 | 2009-12-25 |  | 2009-12-17 | 2009-12-18 | 1.33d? | 0d |  |  |  |

| ID | WBS | Task | Type | Duration | Start | Finish | Baseline start | Baseline finish | Baseline duration | Total slack |
| --- | --- | --- | --- | --- | --- | --- | --- | --- | --- | --- |
| 53 | 3.2.4 | **Search** |  | 1.33d? | 2009-12-24 | 2009-12-25 | 2009-12-17 | 2009-12-18 | 1.33d? | 0d |
| 54 | 3.2.4.1 | Advanced |  | 1.33d? | 2009-12-24 | 2009-12-25 | 2009-12-17 | 2009-12-18 | 1.33d? | 0d |
| 55 | 3.2.4.2 | **Result** |  | 1.33d? | 2009-12-24 | 2009-12-25 | 2009-12-17 | 2009-12-18 | 1.33d? | 0d |
| 56 | 3.2.4.2.1 | Grouping |  | 1.33d? | 2009-12-24 | 2009-12-25 | 2009-12-17 | 2009-12-18 | 1.33d? | 0d |
| 57 | 3.2.4.2.2 | Order |  | 1.33d? | 2009-12-24 | 2009-12-25 | 2009-12-17 | 2009-12-18 | 1.33d? | 0d |
| 58 | 3.2.4.2.3 | View model |  | 1.33d? | 2009-12-24 | 2009-12-25 | 2009-12-17 | 2009-12-18 | 1.33d? | 0d |
| 59 | 3.3 | **Context** |  | 1.33d? | 2009-12-23 | 2009-12-25 | 2009-12-16 | 2009-12-18 | 1.33d? | 0d |
| 60 | 3.3.1 | Content | milestone | 0w? | 2009-12-23 | 2009-12-23 | 2009-12-16 | 2009-12-16 | 0w? | 1.33d |
| 61 | 3.3.2 | Node | milestone | 0w? | 2009-12-23 | 2009-12-23 | 2009-12-16 | 2009-12-16 | 0w? | 1.33d |
| 62 | 3.3.3 | Calendar |  | 1.33d? | 2009-12-24 | 2009-12-25 | 2009-12-17 | 2009-12-18 | 1.33d? | 0d |
| 63 | 3.3.4 | Notification |  | 1.33d? | 2009-12-24 | 2009-12-25 | 2009-12-17 | 2009-12-18 | 1.33d? | 0d |
| 64 | 3.3.5 | Profile |  | 1.33d? | 2009-12-24 | 2009-12-25 | 2009-12-17 | 2009-12-18 | 1.33d? | 0d |
| 65 | 3.4 | **Design** |  | 1.33d? | 2009-12-24 | 2009-12-25 | 2009-12-17 | 2009-12-18 | 1.33d? | 0d |
| 66 | 3.4.1 | **Cockpit** |  | 1.33d? | 2009-12-24 | 2009-12-25 | 2009-12-17 | 2009-12-18 | 1.33d? | 0d |
| 67 | 3.4.1.1 | Administrator |  | 1.33d? | 2009-12-24 | 2009-12-25 | 2009-12-17 | 2009-12-18 | 1.33d? | 0d |
| 68 | 3.4.1.2 | Manager |  | 1.33d? | 2009-12-24 | 2009-12-25 | 2009-12-17 | 2009-12-18 | 1.33d? | 0d |
| 69 | 3.4.1.3 | Widget |  | 1.33d? | 2009-12-24 | 2009-12-25 | 2009-12-17 | 2009-12-18 | 1.33d? | 0d |
| 70 | 3.4.2 | Theme |  | 1.33d? | 2009-12-24 | 2009-12-25 | 2009-12-17 | 2009-12-18 | 1.33d? | 0d |
| 71 | 3.5 | **IDM** |  | 1.33d? | 2009-12-24 | 2009-12-25 | 2009-12-17 | 2009-12-18 | 1.33d? | 0d |
| 72 | 3.5.1 | **Admin** |  | 1.33d? | 2009-12-24 | 2009-12-25 | 2009-12-17 | 2009-12-18 | 1.33d? | 0d |
| 73 | 3.5.1.1 | Bulk |  | 1.33d? | 2009-12-24 | 2009-12-25 | 2009-12-17 | 2009-12-18 | 1.33d? | 0d |
| 74 | 3.5.1.2 | CRUD |  | 1.33d? | 2009-12-24 | 2009-12-25 | 2009-12-17 | 2009-12-18 | 1.33d? | 0d |
| 75 | 3.5.2 | **Service** |  | 1.33d? | 2009-12-24 | 2009-12-25 | 2009-12-17 | 2009-12-18 | 1.33d? | 0d |
| 76 | 3.5.2.1 | Conference |  | 1.33d? | 2009-12-24 | 2009-12-25 | 2009-12-17 | 2009-12-18 | 1.33d? | 0d |
| 77 | 3.5.2.2 | Instant Message |  | 1.33d? | 2009-12-24 | 2009-12-25 | 2009-12-17 | 2009-12-18 | 1.33d? | 0d |
| 78 | 3.5.2.3 | Notification |  | 1.33d? | 2009-12-24 | 2009-12-25 | 2009-12-17 | 2009-12-18 | 1.33d? | 0d |
| 79 | 3.5.2.4 | Search |  | 1.33d? | 2009-12-24 | 2009-12-25 | 2009-12-17 | 2009-12-18 | 1.33d? | 0d |
